Schedule from MS Project, 2022-09-29 to 2023-02-01, status date 2022-12-01, costs in $, A marks actual dates.

## Calendars

- Standard: Mon-Fri 08:00-12:00, 13:00-17:00; Sat-Sun off.

## Resources

| Resource | Rate |
| --- | --- |
| Nguyen Minh Hien | 30 |
| Vu Huy Hoang | 30 |
| Nguyen Minh Phu | 30 |
| Hoàng Văn Nghĩa | 20 |
| Đỗ Thiện Hoàng | 20 |

## Schedule

| ID | WBS | Task | Duration | Start | Finish | Predecessors | Complete | Remaining | Baseline start | Baseline finish | Baseline duration | Total slack | Free slack | Resources | Work | Actual work | Cost | Baseline cost | Actual cost |
| --- | --- | --- | --- | --- | --- | --- | --- | --- | --- | --- | --- | --- | --- | --- | --- | --- | --- | --- | --- |
| 1 | 1 | **Xây dựng phần mềm quản lý trung tâm gia sư** | 90d | 2022-09-29 A | 2023-02-01 |  | 61% | 35.47d | 2022-09-29 | 2023-02-01 | 90d | 0d |  |  | 1624h | 984h | 44,320 | 43,680 | 26,960 |
| 2 | 1.1 | **Khảo sát dự án** | 12d | 2022-09-29 A | 2022-10-14 A |  | 100% |  | 2022-09-29 | 2022-10-14 | 12d |  |  |  | 104h | 104h | 3,120 | 3,120 | 3,120 |
| 3 | 1.1.1 | Khảo sát các nghiệp vụ | 4d | 2022-09-29 A | 2022-10-04 A |  | 100% |  | 2022-09-29 | 2022-10-04 | 4d |  |  | Nguyen Minh Hien | 32h | 32h | 960 | 960 | 960 |
| 4 | 1.1.2 | Khảo sát các chức năng của hệ thống | 4d | 2022-10-05 A | 2022-10-10 A | 3 | 100% |  | 2022-10-05 | 2022-10-10 | 4d |  |  | Nguyen Minh Hien | 32h | 32h | 960 | 960 | 960 |
| 5 | 1.1.3 | Khảo sát các ràng buộc của hệ thống | 1d | 2022-10-05 A | 2022-10-05 A | 3 | 100% |  | 2022-10-05 | 2022-10-05 | 1d |  |  | Nguyen Minh Phu | 8h | 8h | 240 | 240 | 240 |
| 6 | 1.1.4 | Khảo sát giao diện cơ bản của hệ thống | 4d | 2022-10-11 A | 2022-10-14 A | 4 | 100% |  | 2022-10-11 | 2022-10-14 | 4d |  |  | Vu Huy Hoang | 32h | 32h | 960 | 960 | 960 |
| 7 | 1.2 | **Phân tích hệ thống** | 8d | 2022-10-11 A | 2022-10-20 A |  | 100% |  | 2022-10-11 | 2022-10-20 | 8d |  |  |  | 112h | 112h | 2,720 | 2,720 | 2,720 |
| 8 | 1.2.1 | **Xác định yêu cầu của hệ thống** | 4d | 2022-10-17 A | 2022-10-20 A |  | 100% |  | 2022-10-17 | 2022-10-20 | 4d |  |  |  | 48h | 48h | 1,120 | 1,120 | 1,120 |
| 9 | 1.2.1.1 | Các chức năng chính-phụ | 4d | 2022-10-17 A | 2022-10-20 A | 2 | 100% |  | 2022-10-17 | 2022-10-20 | 4d |  |  | Đỗ Thiện Hoàng | 32h | 32h | 640 | 640 | 640 |
| 10 | 1.2.1.2 | Đảm bảo tốc độ xử lý và nâng cấp trong tương lai | 2d | 2022-10-17 A | 2022-10-18 A | 2 | 100% |  | 2022-10-17 | 2022-10-18 | 2d |  |  | Nguyen Minh Phu | 16h | 16h | 480 | 480 | 480 |
| 11 | 1.2.2 | Phân tích và đặt tả mô hình phân cấp chức năng tổng thể | 4d | 2022-10-11 A | 2022-10-14 A | 4 | 100% |  | 2022-10-11 | 2022-10-14 | 4d |  |  | Hoàng Văn Nghĩa | 32h | 32h | 640 | 640 | 640 |
| 12 | 1.2.3 | Phân tích bảng dữ liệu | 4d | 2022-10-17 A | 2022-10-20 A | 11 | 100% |  | 2022-10-17 | 2022-10-20 | 4d |  |  | Nguyen Minh Hien | 32h | 32h | 960 | 960 | 960 |
| 13 | 1.3 | **Thiết kế** | 31d | 2022-10-17 A | 2022-11-28 |  | 92% | 2.34d | 2022-10-17 | 2022-11-15 | 22d | 11d |  |  | 424h | 392h | 11,280 | 10,640 | 10,640 |
| 14 | 1.3.1 | Thiết kế tổng thể | 5d | 2022-10-21 A | 2022-10-27 A | 8 | 100% |  | 2022-10-21 | 2022-10-27 | 5d |  |  | Vu Huy Hoang | 40h | 40h | 1,200 | 1,200 | 1,200 |
| 15 | 1.3.2 | **Thiết kế chi tiết** | 31d | 2022-10-17 A | 2022-11-28 |  | 92% | 2.58d | 2022-10-17 | 2022-11-15 | 22d | 11d |  |  | 384h | 352h | 10,080 | 9,440 | 9,440 |
| 16 | 1.3.2.1 | Thiết kế cơ sở dữ liệu | 10d | 2022-10-21 A | 2022-11-03 A | 12 | 100% |  | 2022-10-21 | 2022-11-03 | 10d |  |  | Nguyen Minh Hien | 80h | 80h | 2,400 | 2,400 | 2,400 |
| 17 | 1.3.2.2 | Thiết kế giao diện người dùng | 18d | 2022-10-17 A | 2022-11-28 | 6 | 78% | 4d | 2022-10-17 | 2022-11-03 | 14d | 11d | 0d | Hoàng Văn Nghĩa | 144h | 112h | 2,880 | 2,240 | 2,240 |
| 18 | 1.3.2.3 | Thiết kế các chức năng đảm bảo tính logic cho hệ thống | 20d | 2022-10-19 A | 2022-11-15 A | 10 | 100% |  | 2022-10-19 | 2022-11-15 | 20d |  |  | Nguyen Minh Phu | 160h | 160h | 4,800 | 4,800 | 4,800 |
| 19 | 1.4 | **Hiện thực** | 38d | 2022-11-04 A | 2022-12-27 |  | 63% | 14.19d | 2022-11-04 | 2022-12-27 | 38d | 0d |  |  | 600h | 376h | 17,200 | 17,200 | 10,480 |
| 20 | 1.4.1 | Hiện thực cơ sở dữ liệu | 10d | 2022-11-04 A | 2022-11-17 A | 16 | 100% |  | 2022-11-04 | 2022-11-17 | 10d |  |  | Đỗ Thiện Hoàng | 80h | 80h | 1,600 | 1,600 | 1,600 |
| 21 | 1.4.2 | Xây dựng server | 5d | 2022-11-16 A | 2022-11-22 A | 13 | 100% |  | 2022-11-16 | 2022-11-22 | 5d |  |  | Vu Huy Hoang | 40h | 40h | 1,200 | 1,200 | 1,200 |
| 22 | 1.4.3 | Hiện thực phần giao diện frontend | 30d | 2022-11-04 A | 2022-12-15 | 17 | 67% | 10d | 2022-11-04 | 2022-12-15 | 30d | 8d |  | Nguyen Minh Hien | 240h | 160h | 7,200 | 7,200 | 4,800 |
| 23 | 1.4.4 | Hiện thực phần backend | 30d | 2022-11-16 A | 2022-12-27 | 16, 18 | 40% | 18d | 2022-11-16 | 2022-12-27 | 30d | 0d |  | Nguyen Minh Phu | 240h | 96h | 7,200 | 7,200 | 2,880 |
| 24 | 1.5 | **Kiểm thử** | 11d | 2022-12-28 | 2023-01-11 |  |  |  | 2022-12-28 | 2023-01-11 | 11d | 0d |  |  | 88h |  | 2,080 | 2,080 |  |
| 25 | 1.5.1 | Thiết kế các test scenario, các testcase | 5d | 2022-12-28 | 2023-01-03 | 19 |  |  | 2022-12-28 | 2023-01-03 | 5d | 0d |  | Hoàng Văn Nghĩa | 40h |  | 800 | 800 |  |
| 26 | 1.5.2 | Thực hiện kiểm thử | 2d | 2023-01-04 | 2023-01-05 | 25 |  |  | 2023-01-04 | 2023-01-05 | 2d | 0d |  | Đỗ Thiện Hoàng | 16h |  | 320 | 320 |  |
| 27 | 1.5.3 | Sửa lỗi | 4d | 2023-01-06 | 2023-01-11 | 26 |  |  | 2023-01-06 | 2023-01-11 | 4d | 0d |  | Nguyen Minh Hien | 32h |  | 960 | 960 |  |

| ID | WBS | Task | Duration | Start | Finish | Predecessors | Baseline start | Baseline finish | Baseline duration | Total slack | Resources | Work | Cost | Baseline cost |
| --- | --- | --- | --- | --- | --- | --- | --- | --- | --- | --- | --- | --- | --- | --- |
| 28 | 1.6 | **Triển khai và bảo trì** | 15d | 2023-01-12 | 2023-02-01 |  | 2023-01-12 | 2023-02-01 | 15d | 0d |  | 296h | 7,920 | 7,920 |
| 29 | 1.6.1 | Cài đặt hệ thống | 5d | 2023-01-12 | 2023-01-18 | 24 | 2023-01-12 | 2023-01-18 | 5d | 0d | Vu Huy Hoang | 40h | 1,200 | 1,200 |
| 30 | 1.6.2 | Đào tạo và hướng dẫn người sử dụng | 3d | 2023-01-19 | 2023-01-23 | 29 | 2023-01-19 | 2023-01-23 | 3d | 7d | Đỗ Thiện Hoàng | 24h | 480 | 480 |
| 31 | 1.6.3 | Sửa lỗi khi vận hành hệ thống | 9d | 2023-01-19 | 2023-01-31 | 29 | 2023-01-19 | 2023-01-31 | 9d | 1d | Hoàng Văn Nghĩa | 72h | 1,440 | 1,440 |
| 32 | 1.6.4 | Bảo trì hệ thống | 10d | 2023-01-19 | 2023-02-01 | 29 | 2023-01-19 | 2023-02-01 | 10d | 0d | Nguyen Minh Hien | 80h | 2,400 | 2,400 |
| 33 | 1.6.5 | Nâng cấp hệ thống | 10d | 2023-01-19 | 2023-02-01 | 29 | 2023-01-19 | 2023-02-01 | 10d | 0d | Nguyen Minh Phu | 80h | 2,400 | 2,400 |
